# Step10

Schedule from MS Project, 2026-04-06 to 2026-06-22, status date 2026-05-28, costs in ₽, A marks actual dates.

## Calendars

- Стандартный: Mon-Fri 09:00-13:00, 14:00-18:00; Sat-Sun off. Exceptions (off unless hours are given): 2026-04-30 09:00-13:00, 14:00-17:00 (1 мая), 2026-05-01 (1 мая), 2026-05-08 09:00-13:00, 14:00-17:00 (9 мая), 2026-05-11 (9 мая), 2026-06-11 09:00-13:00, 14:00-17:00 (12 июня), 2026-06-12 (12 июня).

## Resources

| Resource | Group | Unit | Rate | Cost per use | Notes |
| --- | --- | --- | --- | --- | --- |
| Соколов | Программисты |  | 437.5 |  | Ведущий программист |
| Соломин | Программисты |  | 343.75 |  |  |
| Тимофеев | Программисты |  | 312.5 |  |  |
| Яковлева | Программисты |  | 312.5 |  |  |
| Петров | Дизайнеры |  | 468.75 |  | Ведущий дизайнер |
| Кузнецов | Дизайнеры |  | 312.5 |  |  |
| Фомина | Редактор сайта |  | 250 |  |  |
| Преподаватели | Преподаватели |  | 87.5 |  |  |
| Программное обеспечение | ПО |  | 30000 | 5000 |  |
| Картриджи для принтера | Расходные материалы |  | 2500 |  |  |
| Бумага | Расходные материалы | пач | 200 |  | 3 пач/мес |

## Schedule

| ID | WBS | Task | Type | Duration | Start | Finish | Predecessors | Complete | Remaining | Baseline start | Baseline finish | Baseline duration | Total slack | Resources | Work | Actual work | Cost | Baseline cost | Actual cost |
| --- | --- | --- | --- | --- | --- | --- | --- | --- | --- | --- | --- | --- | --- | --- | --- | --- | --- | --- | --- |
| 1 | 1 | Начало проекта | milestone | 0d | 2026-04-06 A | 2026-04-06 A |  | 100% |  | 2026-04-06 | 2026-04-06 | 0d |  |  |  |  |  |  |  |
| 2 | 2 | Установка ПО |  | 5d | 2026-04-07 A | 2026-04-13 A | 1FS+1d | 100% |  | 2026-04-07 | 2026-04-13 | 5d |  | Программное обеспечение; Тимофеев; Яковлева; Соколов | 120h | 120h | 77,500 | 77,500 | 77,500 |
| 3 | 3 | Обучение персонала |  | 17.5d | 2026-04-21 A | 2026-05-18 A | 2SS+10d | 100% |  | 2026-04-21 | 2026-05-18 | 17.5d |  | Бумага [0.02 пач]; Картриджи для принтера; Кузнецов; Петров; Преподаватели [300%]; Соломин; Тимофеев; Фомина; Яковлева; Соколов | 1120h | 1120h | 356,525 | 356,525 | 356,525 |
| 4 | 4 | **Разработка представительских сайтов** |  | 10d | 2026-05-18 A | 2026-06-01 | 3 | 86% | 1.43d | 2026-05-18 | 2026-05-28 | 8d | 13.33d |  | 96h | 86.4h | 31,000 | 26,000 | 27,890 |
| 5 | 4.1 | **Разработка сайта 1** |  | 5d | 2026-05-18 A | 2026-05-25 A |  | 100% |  | 2026-05-18 | 2026-05-25 | 5d |  |  | 40h | 40h | 13,000 | 13,000 | 13,000 |
| 6 | 4.1.1 | Разработка дизайна сайта 1 |  | 2d | 2026-05-18 A | 2026-05-20 A |  | 100% |  | 2026-05-18 | 2026-05-20 | 2d |  | Кузнецов | 16h | 16h | 5,000 | 5,000 | 5,000 |
| 7 | 4.1.2 | Программирование сайта 1 |  | 3d | 2026-05-20 A | 2026-05-25 A | 6 | 100% |  | 2026-05-20 | 2026-05-25 | 3d |  | Тимофеев | 24h | 24h | 7,500 | 7,500 | 7,500 |
| 8 | 4.2 | **Разработка сайта 2** |  | 7d | 2026-05-21 A | 2026-06-01 | 5FS-2d | 78% | 1.56d | 2026-05-21 | 2026-05-28 | 5d | 13.33d |  | 56h | 46.4h | 18,000 | 13,000 | 14,890 |
| 9 | 4.2.1 | Разработка дизайна сайта 2 |  | 4d | 2026-05-21 A | 2026-05-27 A |  | 100% |  | 2026-05-21 | 2026-05-25 | 2d |  | Кузнецов | 32h | 32h | 10,000 | 5,000 | 10,000 |
| 10 | 4.2.2 | Программирование сайта 2 |  | 5d | 2026-05-25 A | 2026-06-01 | 9 | 60% | 2d | 2026-05-25 | 2026-05-28 | 3d | 13.33d | Тимофеев | 24h | 14.4h | 7,500 | 7,500 | 4,500 |
| 11 | 5 | Представительские сайты созданы | milestone | 0d | 2026-05-28 A | 2026-05-28 A | 4 | 100% |  | 2026-05-28 | 2026-05-28 | 0d |  |  |  |  |  |  |  |
| 12 | 6 | **Разработка корпоративного сайта** |  | 23.33d | 2026-05-18 A | 2026-06-22 | 3 | 31% | 16.02d | 2026-05-18 | 2026-06-22 | 23.33d | 0d |  | 424h | 132h | 147,833.33 | 147,833.33 | 53,532.5 |
| 13 | 6.1 | Проектирование сайта |  | 5d | 2026-05-18 A | 2026-05-25 A |  | 100% |  | 2026-05-18 | 2026-05-25 | 5d |  | Петров; Соколов | 80h | 80h | 36,250 | 36,250 | 36,250 |
| 14 | 6.2 | Программирование сайта |  | 15d | 2026-05-25 A | 2026-06-16 | 13 | 22% | 11.75d | 2026-05-25 | 2026-06-16 | 15d | 0d | Соломин; Яковлева | 240h | 52h | 79,750 | 79,750 | 17,282.5 |
| 15 | 6.3 | Наполнение сайта |  | 3d | 2026-06-10 | 2026-06-16 | 14FS-3d |  |  | 2026-06-10 | 2026-06-16 | 3d | 0d | Фомина | 24h |  | 6,000 | 6,000 |  |
| 16 | 6.4 | Тестирование сайта |  | 3.33d | 2026-06-16 | 2026-06-22 | 15 |  |  | 2026-06-16 | 2026-06-22 | 3.33d | 0d | Соломин; Яковлева; Тимофеев | 80h |  | 25,833.33 | 25,833.33 |  |
| 17 | 7 | Сдача сайта заказчику | milestone | 0d | 2026-06-22 | 2026-06-22 | 16 |  |  | 2026-06-22 | 2026-06-22 | 0d | 0d |  |  |  |  |  |  |
