# Step8_3

Schedule from MS Project, 2026-04-06 to 2026-06-30, status date 2026-03-26, costs in ₽.

## Calendars

- Стандартный: Mon-Fri 09:00-13:00, 14:00-18:00; Sat-Sun off. Exceptions (off unless hours are given): 2026-04-30 09:00-13:00, 14:00-17:00 (1 мая), 2026-05-01 (1 мая), 2026-05-08 09:00-13:00, 14:00-17:00 (9 мая), 2026-05-11 (9 мая), 2026-06-11 09:00-13:00, 14:00-17:00 (12 июня), 2026-06-12 (12 июня).

## Resources

| Resource | Group | Unit | Rate | Cost per use | Notes |
| --- | --- | --- | --- | --- | --- |
| Соколов | Программисты |  | 437.5 |  | Ведущий программист |
| Соломин | Программисты |  | 343.75 |  |  |
| Тимофеев | Программисты |  | 312.5 |  |  |
| Яковлева | Программисты |  | 312.5 |  |  |
| Петров | Дизайнеры |  | 468.75 |  | Ведущий дизайнер |
| Кузнецов | Дизайнеры |  | 312.5 |  |  |
| Фомина | Редактор сайта |  | 250 |  |  |
| Преподаватели | Преподаватели |  | 87.5 |  |  |
| Программное обеспечение | ПО |  | 30000 | 5000 |  |
| Картриджи для принтера | Расходные материалы |  | 2500 |  |  |
| Бумага | Расходные материалы | пач | 200 |  | 3 пач/мес |

## Schedule

| ID | WBS | Task | Type | Duration | Start | Finish | Predecessors | Total slack | Free slack | Resources | Work | Cost |
| --- | --- | --- | --- | --- | --- | --- | --- | --- | --- | --- | --- | --- |
| 1 | 1 | Начало проекта | milestone | 0d | 2026-04-06 | 2026-04-06 |  | 0d |  |  |  |  |
| 2 | 2 | Установка ПО |  | 15d | 2026-04-07 | 2026-04-27 | 1FS+1d | 0d |  | Программное обеспечение; Соколов | 120h | 87,500 |
| 3 | 3 | Обучение персонала |  | 22.5d | 2026-04-21 | 2026-05-25 | 2SS+10d | 0d |  | Бумага [0.02 пач]; Картриджи для принтера; Кузнецов; Петров; Преподаватели [300%]; Соломин; Тимофеев; Фомина; Яковлева; Соколов | 1120h | 356,175 |
| 4 | 4 | **Разработка представительских сайтов** |  | 8d | 2026-05-25 | 2026-06-04 | 3 | 17d | 0d |  | 80h | 26,000 |
| 5 | 4.1 | **Разработка сайта 1** |  | 5d | 2026-05-25 | 2026-06-01 |  | 17d | 0d |  | 40h | 13,000 |
| 6 | 4.1.1 | Разработка дизайна сайта 1 |  | 2d | 2026-05-25 | 2026-05-27 |  | 17d | 0d | Кузнецов | 16h | 5,000 |
| 7 | 4.1.2 | Программирование сайта 1 |  | 3d | 2026-05-27 | 2026-06-01 | 6 | 17d |  | Тимофеев | 24h | 7,500 |
| 8 | 4.2 | **Разработка сайта 2** |  | 5d | 2026-05-28 | 2026-06-04 | 5FS-2d | 17d |  |  | 40h | 13,000 |
| 9 | 4.2.1 | Разработка дизайна сайта 2 |  | 2d | 2026-05-28 | 2026-06-01 |  | 17d | 0d | Кузнецов | 16h | 5,000 |
| 10 | 4.2.2 | Программирование сайта 2 |  | 3d | 2026-06-01 | 2026-06-04 | 9 | 17d |  | Тимофеев | 24h | 7,500 |
| 11 | 5 | Представительские сайты созданы | milestone | 0d | 2026-06-04 | 2026-06-04 | 4 | 17d |  |  |  |  |
| 12 | 6 | **Разработка корпоративного сайта** |  | 25d | 2026-05-25 | 2026-06-30 | 3 | 0d |  |  | 424h | 148,250 |
| 13 | 6.1 | Проектирование сайта |  | 5d | 2026-05-25 | 2026-06-01 |  | 0d |  | Петров; Соколов | 80h | 36,250 |
| 14 | 6.2 | Программирование сайта |  | 15d | 2026-06-01 | 2026-06-23 | 13 | 0d |  | Соломин; Яковлева | 240h | 79,750 |
| 15 | 6.3 | Наполнение сайта |  | 3d | 2026-06-18 | 2026-06-23 | 14FS-3d | 0d |  | Фомина | 24h | 6,000 |
| 16 | 6.4 | Тестирование сайта |  | 5d | 2026-06-23 | 2026-06-30 | 15 | 0d |  | Соломин; Яковлева | 80h | 26,250 |
| 17 | 7 | Сдача сайта заказчику | milestone | 0d | 2026-06-30 | 2026-06-30 | 16 | 0d |  |  |  |  |
