# Step2

Schedule from MS Project, 2026-03-02 to 2026-07-22, costs in ₽.
Команда: 16 человек Длительность: 6 месяцев / Бюджет: 50 000 рублей
Команда: 16 человекДлительность: 6 месяцев / Бюджет: 50 000 рублей

## Calendars

- Стандартный: Mon-Fri 09:00-13:00, 14:00-18:00; Sat-Sun off. Exceptions (off unless hours are given): 2026-03-09 (8 марта), 2026-04-30 09:00-13:00, 14:00-17:00 (1 мая), 2026-05-01 (День Труда), 2026-05-08 09:00-13:00, 14:00-17:00 (9 мая), 2026-05-11 (9 мая), 2026-06-11 09:00-13:00, 14:00-17:00 (День России), 2026-06-12 (День России).

## Resources

| Resource | Group | Rate | Cost per use |
| --- | --- | --- | --- |
| Ведущий программист | Программирование | 10 | 100 |
| Программист №1 | Программирование | 7 | 50 |
| Программист №2 | Программирование | 7 | 50 |
| Программист №3 | Программирование | 7 | 50 |
| Программист №4 | Программирование | 7 | 50 |
| Системный аналитик | Анализ | 20 | 300 |
| Художник-дизайнер | Дизайн | 8 | 70 |
| Технический писатель | Документация | 5 | 20 |
| Web-дизайнер | Интернет | 7 | 50 |
| 3D аниматор | Дизайн | 8 | 70 |
| Мультимедиа-корреспондент | М-медиа | 3 | 20 |
| Наборщик-данных №1 | Ввод данных | 2 | 10 |
| Наборщик-данных №2 | Ввод данных | 2 | 10 |
| Наборщик-данных №3 | Ввод данных | 2 | 10 |
| Наборщик-данных №4 | Ввод данных | 2 | 10 |
| Наборщик-данных №5 | Ввод данных | 2 | 10 |
| Сервер |  | 2 |  |

## Schedule

| ID | WBS | Task | Type | Duration | Start | Finish | Predecessors | Total slack | Free slack | Resources | Work | Cost |
| --- | --- | --- | --- | --- | --- | --- | --- | --- | --- | --- | --- | --- |
| 1 | 1 | Начало проекта | milestone | 0d | 2026-03-02 09:00 | 2026-03-02 09:00 |  | 39.05d | 0d |  |  |  |
| 2 | 2 | **Создание интерфейса** |  | 72.17d | 2026-03-02 09:00 | 2026-06-16 14:23 | 1 | 0d |  |  | 560h | 5,650 |
| 3 | 2.1 | **Разработка дизайна интерфейса** |  | 25.62d | 2026-03-02 09:00 | 2026-04-07 15:00 |  | 39.05d | 0d |  | 320h | 2,770 |
| 4 | 2.1.1 | Разработка 2D графических элементов |  | 3w | 2026-03-02 09:00 | 2026-03-24 12:00 |  | 39.05d | 0d | Художник-дизайнер | 120h | 1,030 |
| 5 | 2.1.2 | Разработка 3D графических элементов |  | 2w | 2026-03-02 09:00 | 2026-03-17 11:00 | 4SS | 39.05d | 0d | 3D аниматор | 80h | 710 |
| 6 | 2.1.3 | Создание заставки |  | 3w | 2026-03-17 11:00 | 2026-04-07 15:00 | 5 | 39.05d |  | 3D аниматор | 120h | 1,030 |
| 7 | 2.2 | Программирование интерфейса |  | 1.5w | 2026-06-03 17:23 | 2026-06-16 14:23 | 3, 12 | 0d |  | Программист №3; Программист №4; Программист №1; Программист №2 | 240h | 1,880 |
| 8 | 3 | **Построение базы объектов** |  | 78.85d | 2026-03-24 12:00 | 2026-07-16 14:49 |  | 3.71d |  | Сервер | 5458.82h | 15,107.64 |
| 9 | 3.1 | Анализ и построение структуры базы объектов |  | 2w | 2026-03-24 12:00 | 2026-04-07 15:00 |  | 3.71d | 0d | Системный аналитик | 80h | 1,900 |
| 10 | 3.2 | Программирование средств обработки базы объектов |  | 1.5w | 2026-04-08 15:49 | 2026-04-20 10:49 | 9 | 3.71d | 0d | Программист №3; Программист №4; Программист №1; Программист №2 | 240h | 1,880 |
| 11 | 3.3 | Наполнение базы объектов |  | 12w | 2026-04-20 10:49 | 2026-07-16 14:49 | 10 | 3.71d |  | Наборщик-данных №1; Наборщик-данных №2; Наборщик-данных №3; Наборщик-данных №4; Наборщик-данных №5 | 2400h | 4,850 |
| 12 | 4 | **Создание ядра GIS** |  | 64.67d | 2026-03-02 09:00 | 2026-06-03 17:23 |  | 0d |  |  | 1880h | 18,229.33 |
| 13 | 4.1 | Анализ и проектирование ядра |  | 3.08w | 2026-03-02 09:00 | 2026-03-24 12:00 |  | 0d |  | Ведущий программист; Системный аналитик | 240h | 4,000 |
| 14 | 4.2 | Создание модели ядра |  | 2.02w | 2026-03-24 12:00 | 2026-04-07 12:49 | 13 | 0d |  | Ведущий программист; Программист №1; Программист №2; Программист №3; Программист №4 | 400h | 3,336.46 |
| 15 | 4.3 | Тестирование модели ядра |  | 0.25w | 2026-04-07 12:49 | 2026-04-08 15:49 | 14 | 0d |  | Программист №1; Программист №2; Программист №3; Программист №4 | 40h | 480 |
| 16 | 4.4 | Создание рабочей версии ядра |  | 7.56w | 2026-04-08 15:49 | 2026-06-03 17:23 | 15 | 0d |  | Ведущий программист; Программист №1; Программист №2; Программист №3; Программист №4 | 1200h | 9,412.87 |
| 17 | 5 | Создание мультимедиа – наполнения |  | 6w | 2026-04-07 15:00 | 2026-05-22 16:00 | 3 | 41.44d |  | Мультимедиа-корреспондент | 240h | 740 |
| 18 | 6 | Создание справочной системы |  | 2w | 2026-06-25 17:23 | 2026-07-10 10:23 | 7 | 8.14d |  | Технический писатель | 80h | 420 |
| 19 | 7 | **Создание руководства пользователя** |  | 17.38d | 2026-06-01 12:23 | 2026-06-25 17:23 | 7FS-10d | 0d |  |  | 160h | 1,010 |
| 20 | 7.1 | Разработка дизайна руководства |  | 1w | 2026-06-01 12:23 | 2026-06-08 14:23 |  | 0d |  | Художник-дизайнер | 40h | 390 |
| 21 | 7.2 | Написание руководства пользователя |  | 3w | 2026-06-03 12:23 | 2026-06-25 17:23 | 20SS+2d | 0d |  | Технический писатель | 120h | 620 |
| 22 | 8 | **Создание web-сайта и поддержка** |  | 23.62d | 2026-06-03 12:23 | 2026-07-08 10:23 |  | 0d |  |  | 248h | 2,106 |
| 23 | 8.1 | Разработка структуры сайта |  | 1d | 2026-06-03 12:23 | 2026-06-04 12:23 | 21SS | 0d |  | Web-дизайнер | 8h | 106 |
| 24 | 8.2 | Разработка дизайна сайта |  | 1.43w | 2026-06-04 12:23 | 2026-06-16 16:23 | 23 | 0d |  | Web-дизайнер; 3D аниматор; Художник-дизайнер | 120h | 1,110 |
| 25 | 8.3 | Наполнение сайта |  | 3w | 2026-06-16 16:23 | 2026-07-08 10:23 | 24 | 0d |  | Web-дизайнер | 120h | 890 |
| 26 | 9 | Тестирование сайта |  | 3.03w | 2026-07-01 10:23 | 2026-07-22 11:29 | 22FS-1w | 0d |  | Программист №1; Программист №2; Программист №3; Программист №4 | 480h | 3,560 |
| 27 | 10 | Сдача сайта в эксплуатацию | milestone | 0d | 2026-07-22 11:29 | 2026-07-22 11:29 | 26 | 0d |  |  |  |  |

| ID | WBS | Task | Duration | Start | Finish | Total slack | Constraint | Resources | Work | Cost |
| --- | --- | --- | --- | --- | --- | --- | --- | --- | --- | --- |
| 28 | 11 | **Совещание** | 95.75d | 2026-03-04 10:00 | 2026-07-22 11:00 | 0.06d |  |  | 147h | 903 |
| 29 | 11.1 | Совещание 1 | 1h | 2026-03-04 10:00 | 2026-03-04 11:00 | 95.69d | start no earlier than 2026-03-04 10:00 | 3D аниматор; Ведущий программист; Мультимедиа-корреспондент; Системный аналитик; Технический писатель; Художник-дизайнер; Web-дизайнер | 7h | 43 |
| 30 | 11.2 | Совещание 2 | 1h | 2026-03-11 10:00 | 2026-03-11 11:00 | 91.69d | start no earlier than 2026-03-11 10:00 | 3D аниматор; Ведущий программист; Мультимедиа-корреспондент; Системный аналитик; Технический писатель; Художник-дизайнер; Web-дизайнер | 7h | 43 |
| 31 | 11.3 | Совещание 3 | 1h | 2026-03-18 10:00 | 2026-03-18 11:00 | 86.69d | start no earlier than 2026-03-18 10:00 | 3D аниматор; Ведущий программист; Мультимедиа-корреспондент; Системный аналитик; Технический писатель; Художник-дизайнер; Web-дизайнер | 7h | 43 |
| 32 | 11.4 | Совещание 4 | 1h | 2026-03-25 10:00 | 2026-03-25 11:00 | 81.69d | start no earlier than 2026-03-25 10:00 | 3D аниматор; Ведущий программист; Мультимедиа-корреспондент; Системный аналитик; Технический писатель; Художник-дизайнер; Web-дизайнер | 7h | 43 |
| 33 | 11.5 | Совещание 5 | 1h | 2026-04-01 10:00 | 2026-04-01 11:00 | 76.69d | start no earlier than 2026-04-01 10:00 | 3D аниматор; Ведущий программист; Мультимедиа-корреспондент; Системный аналитик; Технический писатель; Художник-дизайнер; Web-дизайнер | 7h | 43 |
| 34 | 11.6 | Совещание 6 | 1h | 2026-04-08 10:00 | 2026-04-08 11:00 | 71.69d | start no earlier than 2026-04-08 10:00 | 3D аниматор; Ведущий программист; Мультимедиа-корреспондент; Системный аналитик; Технический писатель; Художник-дизайнер; Web-дизайнер | 7h | 43 |
| 35 | 11.7 | Совещание 7 | 1h | 2026-04-15 10:00 | 2026-04-15 11:00 | 66.69d | start no earlier than 2026-04-15 10:00 | 3D аниматор; Ведущий программист; Мультимедиа-корреспондент; Системный аналитик; Технический писатель; Художник-дизайнер; Web-дизайнер | 7h | 43 |
| 36 | 11.8 | Совещание 8 | 1h | 2026-04-22 10:00 | 2026-04-22 11:00 | 61.69d | start no earlier than 2026-04-22 10:00 | 3D аниматор; Ведущий программист; Мультимедиа-корреспондент; Системный аналитик; Технический писатель; Художник-дизайнер; Web-дизайнер | 7h | 43 |
| 37 | 11.9 | Совещание 9 | 1h | 2026-04-29 10:00 | 2026-04-29 11:00 | 56.69d | start no earlier than 2026-04-29 10:00 | 3D аниматор; Ведущий программист; Мультимедиа-корреспондент; Системный аналитик; Технический писатель; Художник-дизайнер; Web-дизайнер | 7h | 43 |
| 38 | 11.10 | Совещание 10 | 1h | 2026-05-06 10:00 | 2026-05-06 11:00 | 52.81d | start no earlier than 2026-05-06 10:00 | 3D аниматор; Ведущий программист; Мультимедиа-корреспондент; Системный аналитик; Технический писатель; Художник-дизайнер; Web-дизайнер | 7h | 43 |
| 39 | 11.11 | Совещание 11 | 1h | 2026-05-13 10:00 | 2026-05-13 11:00 | 48.94d | start no earlier than 2026-05-13 10:00 | 3D аниматор; Ведущий программист; Мультимедиа-корреспондент; Системный аналитик; Технический писатель; Художник-дизайнер; Web-дизайнер | 7h | 43 |
| 40 | 11.12 | Совещание 12 | 1h | 2026-05-20 10:00 | 2026-05-20 11:00 | 43.94d | start no earlier than 2026-05-20 10:00 | 3D аниматор; Ведущий программист; Мультимедиа-корреспондент; Системный аналитик; Технический писатель; Художник-дизайнер; Web-дизайнер | 7h | 43 |
| 41 | 11.13 | Совещание 13 | 1h | 2026-05-27 10:00 | 2026-05-27 11:00 | 38.94d | start no earlier than 2026-05-27 10:00 | 3D аниматор; Ведущий программист; Мультимедиа-корреспондент; Системный аналитик; Технический писатель; Художник-дизайнер; Web-дизайнер | 7h | 43 |
| 42 | 11.14 | Совещание 14 | 1h | 2026-06-03 10:00 | 2026-06-03 11:00 | 33.94d | start no earlier than 2026-06-03 10:00 | 3D аниматор; Ведущий программист; Мультимедиа-корреспондент; Системный аналитик; Технический писатель; Художник-дизайнер; Web-дизайнер | 7h | 43 |
| 43 | 11.15 | Совещание 15 | 1h | 2026-06-10 10:00 | 2026-06-10 11:00 | 28.94d | start no earlier than 2026-06-10 10:00 | 3D аниматор; Ведущий программист; Мультимедиа-корреспондент; Системный аналитик; Технический писатель; Художник-дизайнер; Web-дизайнер | 7h | 43 |
| 44 | 11.16 | Совещание 16 | 1h | 2026-06-17 10:00 | 2026-06-17 11:00 | 25.06d | start no earlier than 2026-06-17 10:00 | 3D аниматор; Ведущий программист; Мультимедиа-корреспондент; Системный аналитик; Технический писатель; Художник-дизайнер; Web-дизайнер | 7h | 43 |
| 45 | 11.17 | Совещание 17 | 1h | 2026-06-24 10:00 | 2026-06-24 11:00 | 20.06d | start no earlier than 2026-06-24 10:00 | 3D аниматор; Ведущий программист; Мультимедиа-корреспондент; Системный аналитик; Технический писатель; Художник-дизайнер; Web-дизайнер | 7h | 43 |
| 46 | 11.18 | Совещание 18 | 1h | 2026-07-01 10:00 | 2026-07-01 11:00 | 15.06d | start no earlier than 2026-07-01 10:00 | 3D аниматор; Ведущий программист; Мультимедиа-корреспондент; Системный аналитик; Технический писатель; Художник-дизайнер; Web-дизайнер | 7h | 43 |
| 47 | 11.19 | Совещание 19 | 1h | 2026-07-08 10:00 | 2026-07-08 11:00 | 10.06d | start no earlier than 2026-07-08 10:00 | 3D аниматор; Ведущий программист; Мультимедиа-корреспондент; Системный аналитик; Технический писатель; Художник-дизайнер; Web-дизайнер | 7h | 43 |
| 48 | 11.20 | Совещание 20 | 1h | 2026-07-15 10:00 | 2026-07-15 11:00 | 5.06d | start no earlier than 2026-07-15 10:00 | 3D аниматор; Ведущий программист; Мультимедиа-корреспондент; Системный аналитик; Технический писатель; Художник-дизайнер; Web-дизайнер | 7h | 43 |
| 49 | 11.21 | Совещание 21 | 1h | 2026-07-22 10:00 | 2026-07-22 11:00 | 0.06d | start no earlier than 2026-07-22 10:00 | 3D аниматор; Ведущий программист; Мультимедиа-корреспондент; Системный аналитик; Технический писатель; Художник-дизайнер; Web-дизайнер | 7h | 43 |
